# Fabricação e Fornecimento do Tanque de Armazenamento TQ-960-30/1 (API 650) – Obra 2026-000037

Schedule from MS Project XML, 2026-08-31 to 2026-11-23.

## Calendars

- Padrao_Caldeiraria: Mon-Fri 08:00-12:00, 13:00-17:00; Sat-Sun off.

## Resources

| Resource | Group | Rate |
| --- | --- | --- |
| Engenheiro Mecânico de Projetos / Cálculos | Engenharia | 110 |
| Projetista Mecânico / Modelador 3D | Engenharia | 65 |
| Comprador Técnico Industrial / Diligenciamento | Suprimentos | 55 |
| Caldeireiro de Traçado e Corte Plasma | Caldeiraria | 50 |
| Operador de Calandra e Conformação | Caldeiraria | 50 |
| Soldador Qualificado ASME IX (TIG/MIG/SAW) | Soldagem | 65 |
| Caldeireiro Montador / Ajustador de Equipamentos | Montagem | 55 |
| Inspetor de Soldagem / END Nível II (SNQC) | Qualidade | 90 |
| Pintor Industrial / Tratador de Superfície Inox | Tratamento | 45 |
| Ajudante Operacional de Caldeiraria e Fábrica | Apoio | 30 |
| Rigger / Operador de Carga, Berço e Expedição | Logística | 45 |

## Schedule

| ID | WBS | Task | Duration | Start | Finish | Predecessors | Resources | Work | Text1 | Field | Text2 |
| --- | --- | --- | --- | --- | --- | --- | --- | --- | --- | --- | --- |
| 1 | 1.0 | **1.0 ATIVIDADES (Peso: 2%)** | 2d? | 2026-08-31 | 2026-09-01 |  |  |  |  |  |  |
| 2 | 1.1 | Kick-off Meeting & Alinhamento de Requisitos (Oxiteno S.A. / Grupo Indorama) | 1d? | 2026-08-31 | 2026-08-31 |  | Engenheiro Mecânico de Projetos / Cálculos; Projetista Mecânico / Modelador 3D | 16h | 0.8 d | 1.0 - ATIVIDADES | 100.0% |
| 3 | 1.2 | Formalização do Termo de Abertura do Projeto (TAP) & Governança | 1d? | 2026-09-01 | 2026-09-01 | 2 | Engenheiro Mecânico de Projetos / Cálculos | 8h | 0.8 d | 1.0 - ATIVIDADES | 100.0% |
| 4 | 2.0 | **2.0 METODOS E PROCESSOS (Peso: 20%)** | 20d? | 2026-09-02 | 2026-09-21 |  |  |  |  |  |  |
| 5 | 2.1 | Projeto Executivo & Detalhamento Mecânico 2D/3D (TQ-0960-30) | 4.25d? | 2026-09-02 | 2026-09-08 | 3 | Projetista Mecânico / Modelador 3D; Engenheiro Mecânico de Projetos / Cálculos [50%] | 51h | 3.4 d | 2.0 - METODOS E PROCESSOS | 100.0% |
| 6 | 2.2 | Memórias de Cálculo Estrutural e Pressão (API 650 / ASME) | 3.5d? | 2026-09-08 | 2026-09-11 | 5 | Engenheiro Mecânico de Projetos / Cálculos | 28h | 2.9 d | 2.0 - METODOS E PROCESSOS | 100.0% |
| 7 | 2.3 | Elaboração do PIT (Plano de Inspeção e Testes) e EPS/RQPS | 2.75d? | 2026-09-11 | 2026-09-15 | 6 | Engenheiro Mecânico de Projetos / Cálculos [50%]; Inspetor de Soldagem / END Nível II (SNQC) | 33h | 2.2 d | 2.0 - METODOS E PROCESSOS | 100.0% |
| 8 | 2.4 | Submissão, Análise e Aprovação Técnica pelo Cliente | 3.5d? | 2026-09-16 | 2026-09-21 | 7 | Engenheiro Mecânico de Projetos / Cálculos [50%] | 14h | 2.9 d | 2.0 - METODOS E PROCESSOS | 100.0% |
| 9 | 3.0 | **3.0 SUPRIMENTOS (Peso: 30%)** | 30d? | 2026-09-08 | 2026-10-07 |  |  |  |  |  |  |
| 10 | 3.1 | Requisição de Compras & Cotação de Matérias-Primas Inox | 3.12d? | 2026-09-08 | 2026-09-11 | 8 | Comprador Técnico Industrial / Diligenciamento | 25h | 2.6 d | 3.0 - SUPRIMENTOS | 100.0% |
| 11 | 3.2 | Fabricação e Entrega de Chapas Inox SA-240 304 e Tubos pela Usina | 12.75d? | 2026-09-11 | 2026-09-29 | 10 | Comprador Técnico Industrial / Diligenciamento [25%] | 25h | 10.2 d | 3.0 - SUPRIMENTOS | 99.9% |
| 12 | 3.3 | Aquisição de Forjados, Flanges, Juntas PTFE e Estojos (Paralelo) | 6.38d? | 2026-09-11 | 2026-09-21 | 10 | Comprador Técnico Industrial / Diligenciamento [50%] | 25h | 5.1 d | 3.0 - SUPRIMENTOS | 0.1% |
| 13 | 3.4 | Recebimento, Inspeção Dimensional e Rastreabilidade de MP na Fábrica | 5.25d? | 2026-09-30 | 2026-10-07 | 11, 12 | Inspetor de Soldagem / END Nível II (SNQC); Ajudante Operacional de Caldeiraria e Fábrica | 84h | 4.2 d | 3.0 - SUPRIMENTOS | 100.0% |
| 14 | 4.0 | **4.0 FABRICAÇÃO E MONTAGEM (Peso: 40%)** | 36d? | 2026-10-07 | 2026-11-11 |  |  |  |  |  |  |
| 15 | 4.1 | Traçado, Corte a Plasma e Chanfro das Chapas do Costado e Fundo | 4.25d? | 2026-10-07 | 2026-10-13 | 13 | Caldeireiro de Traçado e Corte Plasma; Ajudante Operacional de Caldeiraria e Fábrica | 68h | 3.4 d | 4.0 - FABRICAÇÃO E MONTAGEM | 100.0% |
| 16 | 4.2 | Calandragem das Virolas e Pré-Montagem dos Aneis do Costado | 4.25d? | 2026-10-13 | 2026-10-19 | 15 | Operador de Calandra e Conformação; Ajudante Operacional de Caldeiraria e Fábrica | 68h | 3.4 d | 4.0 - FABRICAÇÃO E MONTAGEM | 100.0% |
| 17 | 4.3 | Soldagem das Juntas Longitudinais e Circunferencias (ASME IX) | 4.5d? | 2026-10-20 | 2026-10-26 | 16 | Soldador Qualificado ASME IX (TIG/MIG/SAW) [200%]; Ajudante Operacional de Caldeiraria e Fábrica [200%] | 227h | 5.7 d | 4.0 - FABRICAÇÃO E MONTAGEM | 100.0% |
| 18 | 4.4 | Montagem e Soldagem do Fundo Plano e Teto Cônico Autoportante | 4.25d? | 2026-10-26 | 2026-10-30 | 17 | Caldeireiro Montador / Ajustador de Equipamentos [200%]; Soldador Qualificado ASME IX (TIG/MIG/SAW); Ajudante Operacional de Caldeiraria e Fábrica [200%] | 172h | 3.4 d | 4.0 - FABRICAÇÃO E MONTAGEM | 100.0% |
| 19 | 4.5 | Fabricação/Instalação de Bocais A1-W1, Boca de Visita M1 e Acessórios | 4.25d? | 2026-11-02 | 2026-11-06 | 18 | Caldeireiro Montador / Ajustador de Equipamentos; Soldador Qualificado ASME IX (TIG/MIG/SAW); Ajudante Operacional de Caldeiraria e Fábrica | 103h | 3.4 d | 4.0 - FABRICAÇÃO E MONTAGEM | 100.0% |
| 20 | 4.6 | Execução de Ensaios END (Radiografia RX, LP, Caixa de Vácuo e PMI) | 2.25d? | 2026-11-06 | 2026-11-10 | 19 | Inspetor de Soldagem / END Nível II (SNQC); Ajudante Operacional de Caldeiraria e Fábrica | 36h | 1.8 d | 4.0 - FABRICAÇÃO E MONTAGEM | 100.0% |
| 21 | 4.7 | Preparação e Execução do Teste Hidrostático (TH) Fabril | 2d? | 2026-11-10 | 2026-11-11 | 20 | Engenheiro Mecânico de Projetos / Cálculos [50%]; Inspetor de Soldagem / END Nível II (SNQC); Caldeireiro Montador / Ajustador de Equipamentos; Ajudante Operacional de Caldeiraria e Fábrica | 56h | 1.6 d | 4.0 - FABRICAÇÃO E MONTAGEM | 100.0% |
| 22 | 5.0 | **5.0 PINTURA (Peso: 7%)** | 7d? | 2026-11-12 | 2026-11-18 |  |  |  |  |  |  |
| 23 | 5.1 | Decapagem Química e Passivação Integral das Superfícies em Aço Inox | 3d? | 2026-11-12 | 2026-11-16 | 21 | Pintor Industrial / Tratador de Superfície Inox; Ajudante Operacional de Caldeiraria e Fábrica | 48h | 2.4 d | 5.0 - PINTURA | 100.0% |
| 24 | 5.2 | Jateamento e Pintura Externa dos Acessórios em Aço Carbono (Munsell 5Y 8/12) | 2d? | 2026-11-17 | 2026-11-18 | 23 | Pintor Industrial / Tratador de Superfície Inox; Ajudante Operacional de Caldeiraria e Fábrica | 32h | 1.6 d | 5.0 - PINTURA | 100.0% |

Notes:
- 2: Estimativas de 3 Pontos: Otimista = 0.8d / Provável = 1.0d / Pessimista = 1.5d. / Índice de Criticidade MCMC: 100.0% no Caminho Crítico. / Alocação de Recursos: Engenheiro Mecânico de Projetos [100%], Projetista Mecânico [100%] / Total: 16.0 HH. / Cronograma Nivelado pelo Algoritmo Genético & MCMC-Safe Float.
- 3: Estimativas de 3 Pontos: Otimista = 0.8d / Provável = 1.0d / Pessimista = 1.5d. / Índice de Criticidade MCMC: 100.0% no Caminho Crítico. / Alocação de Recursos: Engenheiro Mecânico de Projetos [100%] / Total: 8.0 HH. / Cronograma Nivelado pelo Algoritmo Genético & MCMC-Safe Float.
- 5: Estimativas de 3 Pontos: Otimista = 3.4d / Provável = 4.3d / Pessimista = 6.4d. / Índice de Criticidade MCMC: 100.0% no Caminho Crítico. / Alocação de Recursos: Projetista Mecânico [100%], Engenheiro Mecânico de Projetos [50%] / Total: 51.6 HH. / Cronograma Nivelado pelo Algoritmo Genético & MCMC-Safe Float.
- 6: Estimativas de 3 Pontos: Otimista = 2.9d / Provável = 3.6d / Pessimista = 5.4d. / Índice de Criticidade MCMC: 100.0% no Caminho Crítico. / Alocação de Recursos: Engenheiro Mecânico de Projetos [100%] / Total: 28.8 HH. / Cronograma Nivelado pelo Algoritmo Genético & MCMC-Safe Float.
- 7: Estimativas de 3 Pontos: Otimista = 2.2d / Provável = 2.8d / Pessimista = 4.2d. / Índice de Criticidade MCMC: 100.0% no Caminho Crítico. / Alocação de Recursos: Engenheiro Mecânico de Projetos [50%], Inspetor de Soldagem [100%] / Total: 33.6 HH. / Cronograma Nivelado pelo Algoritmo Genético & MCMC-Safe Float.
- 8: Estimativas de 3 Pontos: Otimista = 2.9d / Provável = 3.6d / Pessimista = 5.4d. / Índice de Criticidade MCMC: 100.0% no Caminho Crítico. / Alocação de Recursos: Engenheiro Mecânico de Projetos [50%] / Total: 14.4 HH. / Cronograma Nivelado pelo Algoritmo Genético & MCMC-Safe Float.
- 10: Estimativas de 3 Pontos: Otimista = 2.6d / Provável = 3.2d / Pessimista = 4.8d. / Índice de Criticidade MCMC: 100.0% no Caminho Crítico. / Alocação de Recursos: Comprador Técnico Industrial [100%] / Total: 25.6 HH. / Cronograma Nivelado pelo Algoritmo Genético & MCMC-Safe Float.
- 11: Estimativas de 3 Pontos: Otimista = 10.2d / Provável = 12.8d / Pessimista = 19.2d. / Índice de Criticidade MCMC: 99.9% no Caminho Crítico. / Alocação de Recursos: Comprador Técnico Industrial [25%] / Total: 25.6 HH. / Cronograma Nivelado pelo Algoritmo Genético & MCMC-Safe Float.
- 12: Estimativas de 3 Pontos: Otimista = 5.1d / Provável = 6.4d / Pessimista = 9.6d. / Índice de Criticidade MCMC: 0.1% no Caminho Crítico. / Alocação de Recursos: Comprador Técnico Industrial [50%] / Total: 25.6 HH. / Cronograma Nivelado pelo Algoritmo Genético & MCMC-Safe Float.
- 13: Estimativas de 3 Pontos: Otimista = 4.2d / Provável = 5.3d / Pessimista = 7.9d. / Índice de Criticidade MCMC: 100.0% no Caminho Crítico. / Alocação de Recursos: Inspetor de Soldagem [100%], Ajudante Operacional de Caldeiraria e Fábrica [100%] / Total: 84.8 HH. / Cronograma Nivelado pelo Algoritmo Genético & MCMC-Safe Float.
- 15: Estimativas de 3 Pontos: Otimista = 3.4d / Provável = 4.3d / Pessimista = 6.4d. / Índice de Criticidade MCMC: 100.0% no Caminho Crítico. / Alocação de Recursos: Caldeireiro de Traçado e Corte Plasma [100%], Ajudante Operacional de Caldeiraria e Fábrica [100%] / Total: 68.8 HH. / Cronograma Nivelado pelo Algoritmo Genético & MCMC-Safe Float.
- 16: Estimativas de 3 Pontos: Otimista = 3.4d / Provável = 4.3d / Pessimista = 6.4d. / Índice de Criticidade MCMC: 100.0% no Caminho Crítico. / Alocação de Recursos: Operador de Calandra e Conformação [100%], Ajudante Operacional de Caldeiraria e Fábrica [100%] / Total: 68.8 HH. / Cronograma Nivelado pelo Algoritmo Genético & MCMC-Safe Float.
- 17: Estimativas de 3 Pontos: Otimista = 5.7d / Provável = 4.5d / Pessimista = 10.6d. / Índice de Criticidade MCMC: 100.0% no Caminho Crítico. / Alocação de Recursos: Soldador Qualificado ASME IX (TIG [200%], Ajudante Operacional de Caldeiraria e Fábrica [200%] / Total: 227.2 HH. / Cronograma Nivelado pelo Algoritmo Genético & MCMC-Safe Float.
- 18: Estimativas de 3 Pontos: Otimista = 3.4d / Provável = 4.3d / Pessimista = 6.4d. / Índice de Criticidade MCMC: 100.0% no Caminho Crítico. / Alocação de Recursos: Caldeireiro Montador [200%], Soldador Qualificado ASME IX (TIG [100%], Ajudante Operacional de Caldeiraria e Fábrica [200%] / Total: 172.0 HH. / Cronograma Nivelado pelo Algoritmo Genético & MCMC-Safe Float.
- 19: Estimativas de 3 Pontos: Otimista = 3.4d / Provável = 4.3d / Pessimista = 6.4d. / Índice de Criticidade MCMC: 100.0% no Caminho Crítico. / Alocação de Recursos: Caldeireiro Montador [100%], Soldador Qualificado ASME IX (TIG [100%], Ajudante Operacional de Caldeiraria e Fábrica [100%] / Total: 103.2 HH. / Cronograma Nivelado pelo Algoritmo Genético & MCMC-Safe Float.
- 20: Estimativas de 3 Pontos: Otimista = 1.8d / Provável = 2.3d / Pessimista = 3.4d. / Índice de Criticidade MCMC: 100.0% no Caminho Crítico. / Alocação de Recursos: Inspetor de Soldagem [100%], Ajudante Operacional de Caldeiraria e Fábrica [100%] / Total: 36.8 HH. / Cronograma Nivelado pelo Algoritmo Genético & MCMC-Safe Float.
- 21: Estimativas de 3 Pontos: Otimista = 1.6d / Provável = 2.0d / Pessimista = 3.0d. / Índice de Criticidade MCMC: 100.0% no Caminho Crítico. / Alocação de Recursos: Engenheiro Mecânico de Projetos [50%], Inspetor de Soldagem [100%], Caldeireiro Montador [100%], Ajudante Operacional de Caldeiraria e Fábrica [100%] / Total: 56.0 HH. / Cronograma Nivelado pelo Algoritmo Genético & MCMC-Safe Float.
- 23: Estimativas de 3 Pontos: Otimista = 2.4d / Provável = 3.0d / Pessimista = 4.5d. / Índice de Criticidade MCMC: 100.0% no Caminho Crítico. / Alocação de Recursos: Pintor Industrial [100%], Ajudante Operacional de Caldeiraria e Fábrica [100%] / Total: 48.0 HH. / Cronograma Nivelado pelo Algoritmo Genético & MCMC-Safe Float.
- 24: Estimativas de 3 Pontos: Otimista = 1.6d / Provável = 2.0d / Pessimista = 3.0d. / Índice de Criticidade MCMC: 100.0% no Caminho Crítico. / Alocação de Recursos: Pintor Industrial [100%], Ajudante Operacional de Caldeiraria e Fábrica [100%] / Total: 32.0 HH. / Cronograma Nivelado pelo Algoritmo Genético & MCMC-Safe Float.

| ID | WBS | Task | Duration | Start | Finish | Predecessors | Resources | Work | Text1 | Field | Text2 |
| --- | --- | --- | --- | --- | --- | --- | --- | --- | --- | --- | --- |
| 25 | 6.0 | **6.0 EXPEDIÇÃO (Peso: 1%)** | 5d? | 2026-11-19 | 2026-11-23 |  |  |  |  |  |  |
| 26 | 6.1 | Emissão, Compilação e Aprovação do Data Book Final com ART (SOP-BRA-019-01) | 1d? | 2026-11-19 | 2026-11-19 | 24 | Engenheiro Mecânico de Projetos / Cálculos; Inspetor de Soldagem / END Nível II (SNQC) [50%] | 12h | 0.8 d | 6.0 - EXPEDIÇÃO | 100.0% |
| 27 | 6.2 | Embalagem Especial, Fabricação do Berço e Carregamento | 1d? | 2026-11-20 | 2026-11-20 | 26 | Caldeireiro Montador / Ajustador de Equipamentos; Rigger / Operador de Carga, Berço e Expedição; Ajudante Operacional de Caldeiraria e Fábrica | 24h | 0.8 d | 6.0 - EXPEDIÇÃO | 100.0% |
| 28 | 6.3 | Transporte Rodoviário Especial CIF e Entrega Técnica no Polo Camaçari/BA | 1d? | 2026-11-23 | 2026-11-23 | 27 | Rigger / Operador de Carga, Berço e Expedição; Comprador Técnico Industrial / Diligenciamento [25%] | 10h | 0.8 d | 6.0 - EXPEDIÇÃO | 100.0% |

Notes:
- 26: Estimativas de 3 Pontos: Otimista = 0.8d / Provável = 1.0d / Pessimista = 1.5d. / Índice de Criticidade MCMC: 100.0% no Caminho Crítico. / Alocação de Recursos: Engenheiro Mecânico de Projetos [100%], Inspetor de Soldagem [50%] / Total: 12.0 HH. / Cronograma Nivelado pelo Algoritmo Genético & MCMC-Safe Float.
- 27: Estimativas de 3 Pontos: Otimista = 0.8d / Provável = 1.0d / Pessimista = 1.5d. / Índice de Criticidade MCMC: 100.0% no Caminho Crítico. / Alocação de Recursos: Caldeireiro Montador [100%], Rigger [100%], Ajudante Operacional de Caldeiraria e Fábrica [100%] / Total: 24.0 HH. / Cronograma Nivelado pelo Algoritmo Genético & MCMC-Safe Float.
- 28: Estimativas de 3 Pontos: Otimista = 0.8d / Provável = 1.0d / Pessimista = 1.5d. / Índice de Criticidade MCMC: 100.0% no Caminho Crítico. / Alocação de Recursos: Rigger [100%], Comprador Técnico Industrial [25%] / Total: 10.0 HH. / Cronograma Nivelado pelo Algoritmo Genético & MCMC-Safe Float.
